# Lịch sách dành cho trẻ em

How a schedule from MS Project changed from version to version. A marks actual dates.

## Version 1 (saved 2025-09-28, file AdvancedTrackingA_Start.mpp)

Note of the change: Bai tuan 4_bo sung

| ID | WBS | Task | Duration | Start | Finish | Predecessors | Total float | Constraint |
| --- | --- | --- | --- | --- | --- | --- | --- | --- |
| 1 | 1 | **Họp nhân viên biên tập** | 60.13d | 2015-04-13 | 2015-07-06 |  |  |  |
| 2 |  | Họp nhân viên biên tập 1 | 1h | 2015-04-13 | 2015-04-13 |  |  |  |
| 3 |  | Họp nhân viên biên tập 2 | 1h | 2015-04-20 | 2015-04-20 |  |  |  |
| 4 |  | Họp nhân viên biên tập 3 | 1h | 2015-04-27 | 2015-04-27 | 16 |  |  |
| 5 |  | Họp nhân viên biên tập 4 | 1h | 2015-05-04 | 2015-05-04 | 17FS-5d |  |  |
| 6 |  | Họp nhân viên biên tập 5 | 1h | 2015-05-11 | 2015-05-11 | 17, 18 |  |  |
| 7 |  | Họp nhân viên biên tập 6 | 1h | 2015-05-18 | 2015-05-18 | 19 |  |  |
| 8 |  | Họp nhân viên biên tập 7 | 1h | 2015-05-25 | 2015-05-25 | 15 |  |  |
| 9 |  | Họp nhân viên biên tập 8 | 1h | 2015-06-01 | 2015-06-01 |  |  |  |
| 10 |  | Họp nhân viên biên tập 9 | 1h | 2015-06-08 | 2015-06-08 | 22 |  |  |
| 11 |  | Họp nhân viên biên tập 10 | 1h | 2015-06-15 | 2015-06-15 | 23 |  |  |
| 12 |  | Họp nhân viên biên tập 11 | 1h | 2015-06-22 | 2015-06-22 | 24FS-2.5% |  |  |
| 13 |  | Họp nhân viên biên tập 12 | 1h | 2015-06-29 | 2015-06-29 | 25 |  |  |
| 14 |  | Họp nhân viên biên tập 13 | 1h | 2015-07-06 | 2015-07-06 | 21 |  |  |
| 15 | 2 | **Sự tiếp nhận** | 35.5d | 2015-04-06 | 2015-05-25 |  |  |  |
| 16 |  | Nhận bản thảo | 0d | 2015-07-23 | 2015-07-23 | 28 | 88.88d | start no earlier than 2015-04-06 |
| 17 |  | Biên tập nội dung | 15d | 2015-04-06 | 2015-04-24 | 29 |  |  |
| 18 |  | Đánh giá tác phẩm gốc | 10.25d | 2015-04-23 | 2015-05-07 |  |  |  |
| 19 |  | Đánh giá của tác giả về nội dung biên tập | 12d | 2015-05-07 | 2015-05-22 | 31 |  |  |
| 20 |  | Bản sao cho bộ phận biên tập | 0d | 2015-05-25 | 2015-05-25 | 32 |  |  |
| 21 | 3 | **Biên tập** | 29.13d | 2015-05-25 | 2015-07-03 | 33 |  |  |
| 22 |  | Sắp xếp bản thảo cho bản sao | 5.13d | 2015-05-25 | 2015-06-01 | 34 |  |  |
| 23 |  | Bản sao | 11.25d | 2015-06-01 | 2015-06-16 |  |  |  |
| 24 |  | Đánh giá của tác giả về bản sao | 10d | 2015-06-16 | 2015-06-29 | 35 |  |  |
| 25 |  | Kết hợp bản sao | 5.13d | 2015-06-26 | 2015-07-03 | 37 |  |  |
| 26 |  | Bàn giao cho bộ phận sản xuất | 0d | 2015-07-03 | 2015-07-03 | 38 |  |  |
| 27 | 4 | **Thiết kế và sản xuất** | 58.25d | 2015-07-03 | 2015-09-23 |  |  |  |
| 28 |  | Thiết lập trang | 15d | 2015-07-03 | 2015-07-23 |  |  |  |
| 29 |  | Thiết kế minh hoạ nội dung | 15.25d | 2015-07-03 | 2015-07-24 | 41 |  |  |
| 30 |  | Duyệt bản in lần 1 | 30d | 2015-07-24 | 2015-09-03 | 40 |  |  |
| 31 |  | Đọc soát và lập chỉ mục | 10d | 2015-07-24 | 2015-08-06 | 36 |  |  |
| 32 |  | Chỉnh sửa theo duyệt bản in lần 1 | 10d | 2015-08-07 | 2015-08-20 | 44 |  |  |
| 33 |  | Gửi bản đã soát đến sản xuất | 0d | 2015-08-21 | 2015-08-21 | 45FS+3d |  |  |
| 34 |  | Nhập chỉnh sửa trang và chỉ mục | 5d | 2015-08-21 | 2015-08-27 |  |  |  |
| 35 |  | Thiết kế bìa sách | 5d | 2015-08-28 | 2015-09-03 | 44 |  |  |
| 36 |  | Duyệt bản in lần 2 | 13d | 2015-09-04 | 2015-09-22 | 48 |  |  |
| 37 |  | Soát lỗi và duyệt lần cuối | 6.5d | 2015-09-04 | 2015-09-14 | 49 |  |  |
| 38 |  | Gửi bản đã soát đến sản xuất | 0d | 2015-09-15 | 2015-09-15 | 50 |  |  |
| 39 |  | Duyệt cuối cùng | 5d | 2015-09-16 | 2015-09-22 | 51 |  |  |
| 40 |  | Thiết kế website đi kèm sách | 10d | 2015-09-04 | 2015-09-17 |  |  |  |
| 41 |  | Tạo bản mockup | 4.5d | 2015-09-04 | 2015-09-10 |  |  |  |
| 42 |  | Duyệt với tác giả | 2d | 2015-09-16 | 2015-09-17 |  |  |  |
| 43 |  | Chuẩn bị màu và in ấn | 46d | 2015-09-23 | 2015-11-25 |  |  |  |
| 44 |  | Gửi đến xưởng in màu | 1d | 2015-09-23 | 2015-09-23 |  |  |  |
| 45 |  | Tạo bản in thử | 10d | 2015-09-28 | 2015-10-09 |  |  |  |
| 46 |  | In và phát hành | 30d | 2015-10-15 | 2015-11-25 |  |  |  |
| 47 | 5 | **Chuẩn bị ra mắt** | 22d | 2015-09-28 | 2015-10-27 |  |  |  |
| 48 |  | Lập kế hoạch ra mắt | 5d | 2015-09-28 | 2015-10-02 |  |  |  |
| 49 |  | Phân công nhóm phụ trách ra mắt | 1d | 2015-10-05 | 2015-10-05 |  |  |  |
| 50 |  | Hoàn thành bảng câu hỏi tác giả | 5d | 2015-10-06 | 2015-10-12 |  |  |  |
| 51 |  | Lên lịch phỏng vấn tác giả | 1d | 2015-10-13 | 2015-10-13 |  |  |  |
| 52 |  | Thiết kế và đặt hàng tài liệu marketing | 10d | 2015-10-14 | 2015-10-27 |  |  |  |

## Version 2 (saved 2025-09-28, file AdvancedTrackingB_Start.mpp)

Note of the change: Bai tuan 4_bo sung

Last finish stays 2015-11-25. Complete tasks 0 → 3.

Changed:

| ID | Task | Start | Finish | Complete |
| --- | --- | --- | --- | --- |
| 1 | **Họp nhân viên biên tập** | 2015-04-13 A |  | 0% → 15% |
| 2 | Họp nhân viên biên tập 1 | 2015-04-13 A | 2015-04-13 A | 0% → 100% |
| 3 | Họp nhân viên biên tập 2 | 2015-04-20 A | 2015-04-20 A | 0% → 100% |
| 15 | **Sự tiếp nhận** | 2015-04-06 A |  | 0% → 40% |
| 17 | Biên tập nội dung | 2015-04-06 A | 2015-04-24 A | 0% → 100% |
